# WBS_QLHS_HyVong v2 Optimized

Schedule from MS Project, 2020-05-11 to 2020-11-16, costs in ₫, A marks actual dates.

## Calendars

- Standard: Mon-Fri 08:00-12:00, 13:00-17:00; Sat-Sun off.

## Resources

| Resource | Rate |
| --- | --- |
| Cty Đối tác |  |
| PM | 62500 |
| Cao Thắng | 62500 |
| Hoàng Sơn | 62500 |
| Tuấn Anh | 62500 |
| Tấn Trường | 62500 |
| Văn Hậu | 62500 |

## Schedule

| ID | WBS | Task | Type | Duration | Start | Finish | Predecessors | Complete | Remaining | Actual finish | Total slack | Free slack | Resources | Work | Actual work | Cost | Actual cost |
| --- | --- | --- | --- | --- | --- | --- | --- | --- | --- | --- | --- | --- | --- | --- | --- | --- | --- |
| 1 | 1 | **Dự án Quản lý Học sinh trường THPT** |  | 136d | 2020-05-11 A | 2020-11-16 |  | 14% | 116.73d |  | 0d |  |  | 1608h | 212h | 135,300,000 | 24,750,000 |
| 2 | 1.1 | **Thu thập và phân tích yêu cầu** |  | 12d | 2020-05-11 A | 2020-05-26 A |  | 100% |  |  |  |  |  | 96h | 96h | 12,000,000 | 12,000,000 |
| 3 | 1.1.1 | **A. Thu thập yêu cầu chức năng quản lý học sinh** |  | 5d | 2020-05-11 A | 2020-05-15 |  | 100% |  | 2020-05-18 |  |  |  | 48h | 48h | 6,000,000 | 6,000,000 |
| 4 | 1.1.1.1 | **Lấy yêu cầu thông tin học sinh cần nhập** |  | 1d | 2020-05-11 A | 2020-05-11 A |  | 100% |  |  |  |  |  | 8h | 8h | 500,000 | 500,000 |
| 5 | 1.1.1.1.1 | Phỏng vấn phòng công tác quản lý học sinh |  | 1d | 2020-05-11 A | 2020-05-11 A |  | 100% |  |  |  |  | Tuấn Anh | 8h | 8h | 500,000 | 500,000 |
| 6 | 1.1.1.2 | **Lấy yêu cầu thông tin thu chi của học sinh** |  | 1d | 2020-05-12 A | 2020-05-12 A | 4 | 100% |  |  |  |  |  | 8h | 8h | 500,000 | 500,000 |
| 7 | 1.1.1.2.1 | Phỏng vấn phòng tài chính |  | 1d | 2020-05-12 A | 2020-05-12 A |  | 100% |  |  |  |  | Tuấn Anh | 8h | 8h | 500,000 | 500,000 |
| 8 | 1.1.1.3 | **Lấy yêu cầu thông tin quản lý kết quả học tập học sinh** |  | 1d | 2020-05-13 A | 2020-05-13 A | 6 | 100% |  |  |  |  |  | 8h | 8h | 500,000 | 500,000 |
| 9 | 1.1.1.3.1 | Phỏng vấn phòng đào tạo |  | 1d | 2020-05-13 A | 2020-05-13 A |  | 100% |  |  |  |  | Tuấn Anh | 8h | 8h | 500,000 | 500,000 |
| 10 | 1.1.1.4 | **Yêu cầu về báo cáo** |  | 3d | 2020-05-14 A | 2020-05-18 A | 8 | 100% |  |  |  |  |  | 24h | 24h | 1,500,000 | 1,500,000 |
| 11 | 1.1.1.4.1 | Lấy yêu cầu báo cáo về học sinh |  | 1d | 2020-05-14 A | 2020-05-14 A |  | 100% |  |  |  |  | Tuấn Anh | 8h | 8h | 500,000 | 500,000 |
| 12 | 1.1.1.4.2 | Lấy yêu cầu báo cáo về học phí |  | 1d | 2020-05-15 A | 2020-05-15 A | 11 | 100% |  |  |  |  | Tuấn Anh | 8h | 8h | 500,000 | 500,000 |
| 13 | 1.1.1.4.3 | Lấy yêu cầu báo cáo về kết quả học tập, sổ liên lạc |  | 1d | 2020-05-18 A | 2020-05-18 A | 12 | 100% |  |  |  |  | Tuấn Anh | 8h | 8h | 500,000 | 500,000 |
| 14 | 1.1.2 | **B. Viết tài liệu và phân tích yêu cầu** |  | 6d | 2020-05-19 A | 2020-05-26 A | 10 | 100% |  |  |  |  |  | 48h | 48h | 6,000,000 | 6,000,000 |
| 15 | 1.1.2.1 | Viết tài liệu mô tả chức năng |  | 3d | 2020-05-19 A | 2020-05-21 A |  | 100% |  |  |  |  | Tuấn Anh | 24h | 24h | 1,500,000 | 1,500,000 |
| 16 | 1.1.2.2 | Làm mô hình giao diện các form (wireframe) |  | 3d | 2020-05-22 A | 2020-05-26 A | 15 | 100% |  |  |  |  | Tuấn Anh | 24h | 24h | 1,500,000 | 1,500,000 |
| 17 | 1.2 | Hoàn thành thu thập và phân tích yêu cầu | milestone | 0d | 2020-05-26 | 2020-05-26 | 2 |  |  |  | 124d |  |  |  |  |  |  |
| 18 | 1.3 | **Thiết kế giải pháp** |  | 3d | 2020-05-27 A | 2020-05-29 A | 17 | 100% |  |  |  |  |  | 48h | 48h | 4,500,000 | 4,500,000 |
| 19 | 1.3.1 | **C. Thiết kế giải pháp và viết tài liệu** |  | 3d | 2020-05-27 A | 2020-05-29 A |  | 100% |  |  |  |  |  | 48h | 48h | 4,500,000 | 4,500,000 |
| 20 | 1.3.1.1 | **Làm tài liệu architect** |  | 3d | 2020-05-27 A | 2020-05-29 A |  | 100% |  |  |  |  |  | 48h | 48h | 3,000,000 | 3,000,000 |
| 21 | 1.3.1.1.1 | Thiết kế tổng quát |  | 3d | 2020-05-27 A | 2020-05-29 A |  | 100% |  |  |  |  | Hoàng Sơn | 24h | 24h | 1,500,000 | 1,500,000 |
| 22 | 1.3.1.1.2 | Thiết kế chi tiết |  | 3d | 2020-05-27 A | 2020-05-29 A |  | 100% |  |  |  |  | Hoàng Sơn | 24h | 24h | 1,500,000 | 1,500,000 |
| 23 | 1.4 | Hoàn thành thiết kế giải pháp | milestone | 0d | 2020-05-29 | 2020-05-29 | 18 |  |  |  | 0d |  |  |  |  |  |  |
| 24 | 1.5 | **Mua license phần mềm và phần cứng** |  | 21d | 2020-06-01 | 2020-06-29 | 23 |  |  |  | 97d | 0d |  | 168h |  | 18,900,000 |  |
| 25 | 1.5.1 | **M. Mua server và license** |  | 21d | 2020-06-01 | 2020-06-29 |  |  |  |  | 97d |  |  | 168h |  | 18,900,000 |  |
| 26 | 1.5.1.1 | **Thu thập thông tin bảng báo giá Windows Server, SQL Server** |  | 21d | 2020-06-01 | 2020-06-29 |  |  |  |  | 97d |  |  | 168h |  | 10,500,000 |  |
| 27 | 1.5.1.1.1 | Tham khảo và đưa ra quyết định chọn nhà cung cấp phần mềm và phần cứng |  | 17d | 2020-06-01 | 2020-06-23 |  |  |  |  | 97d | 0d | Văn Hậu | 136h |  | 8,500,000 |  |
| 28 | 1.5.1.1.2 | Ký hợp đồng |  | 2d | 2020-06-24 | 2020-06-25 | 27 |  |  |  | 97d | 0d | Văn Hậu | 16h |  | 1,000,000 |  |
| 29 | 1.5.1.1.3 | Ký duyệt và thanh toán |  | 2d | 2020-06-26 | 2020-06-29 | 28 |  |  |  | 97d |  | Văn Hậu | 16h |  | 1,000,000 |  |

| ID | WBS | Task | Type | Duration | Start | Finish | Predecessors | Complete | Remaining | Total slack | Resources | Work | Actual work | Cost | Actual cost |
| --- | --- | --- | --- | --- | --- | --- | --- | --- | --- | --- | --- | --- | --- | --- | --- |
| 30 | 1.6 | **Develop phần mềm + viết test case** |  | 87d | 2020-06-01 A | 2020-09-29 | 23 | 9% | 79.26d | 0d |  | 764h | 68h | 51,750,000 | 8,250,000 |
| 31 | 1.6.1 | **D. Phát triển phần mềm (do cty bên ngoài thực hiện)** |  | 87d | 2020-06-01 | 2020-09-29 |  |  |  | 0d |  | 696h |  | 43,500,000 |  |
| 32 | 1.6.1.1 | Analyze, Design, Develop, Testing |  | 87d | 2020-06-01 | 2020-09-29 |  |  |  | 0d | Cty Đối tác | 696h |  |  |  |
| 33 | 1.6.2 | **E. Viết test cases** |  | 8d | 2020-06-01 A | 2020-06-10 A |  | 100% |  |  |  | 68h | 68h | 8,250,000 | 8,250,000 |
| 34 | 1.6.2.1 | **Viết test case cho chức năng quản lý user** |  | 0.25d | 2020-06-01 A | 2020-06-01 A |  | 100% |  |  |  | 6h | 6h | 375,000 | 375,000 |
| 35 | 1.6.2.1.1 | Viết test case tạo user |  | 0.25d | 2020-06-01 A | 2020-06-01 A |  | 100% |  |  | Tấn Trường | 2h | 2h | 125,000 | 125,000 |
| 36 | 1.6.2.1.2 | Viết test case edit user |  | 0.25d | 2020-06-01 A | 2020-06-01 A |  | 100% |  |  | Tấn Trường | 2h | 2h | 125,000 | 125,000 |
| 37 | 1.6.2.1.3 | Viết test case inactive/activate user |  | 0.25d | 2020-06-01 A | 2020-06-01 A |  | 100% |  |  | Tấn Trường | 2h | 2h | 125,000 | 125,000 |
| 38 | 1.6.2.2 | **Viết test case cho module quản lý học sinh** |  | 1.5d | 2020-06-01 A | 2020-06-02 A | 34 | 100% |  |  |  | 12h | 12h | 750,000 | 750,000 |
| 39 | 1.6.2.2.1 | Viết test case nhập thông tin học sinh |  | 0.5d | 2020-06-01 A | 2020-06-01 A |  | 100% |  |  | Tấn Trường | 4h | 4h | 250,000 | 250,000 |
| 40 | 1.6.2.2.2 | Viết test case sửa thông tin học sinh |  | 0.5d | 2020-06-01 A | 2020-06-02 A | 39 | 100% |  |  | Tấn Trường | 4h | 4h | 250,000 | 250,000 |
| 41 | 1.6.2.2.3 | Viết test case xóa thông tin học sinh |  | 0.5d | 2020-06-02 A | 2020-06-02 A | 40 | 100% |  |  | Tấn Trường | 4h | 4h | 250,000 | 250,000 |
| 42 | 1.6.2.3 | **Test case module quản lý kết quả học sinh** |  | 4.25d | 2020-06-02 A | 2020-06-08 A | 38 | 100% |  |  |  | 34h | 34h | 2,125,000 | 2,125,000 |
| 43 | 1.6.2.3.1 | Viết test case nhập điểm |  | 0.5d | 2020-06-02 A | 2020-06-03 A |  | 100% |  |  | Tấn Trường | 4h | 4h | 250,000 | 250,000 |
| 44 | 1.6.2.3.2 | Viết test case xóa điểm |  | 0.5d | 2020-06-03 A | 2020-06-03 A | 43 | 100% |  |  | Tấn Trường | 4h | 4h | 250,000 | 250,000 |
| 45 | 1.6.2.3.3 | Viết test case sửa điểm |  | 0.5d | 2020-06-03 A | 2020-06-04 A | 44 | 100% |  |  | Tấn Trường | 4h | 4h | 250,000 | 250,000 |
| 46 | 1.6.2.3.4 | Viết test case tính điểm trung bình |  | 0.75d | 2020-06-04 A | 2020-06-04 A | 45 | 100% |  |  | Tấn Trường | 6h | 6h | 375,000 | 375,000 |
| 47 | 1.6.2.3.5 | Viết test case thống kê xếp loại học sinh |  | 1d | 2020-06-05 A | 2020-06-05 A | 46 | 100% |  |  | Tấn Trường | 8h | 8h | 500,000 | 500,000 |
| 48 | 1.6.2.3.6 | Viết test case in phiếu điểm bảng điểm các môn |  | 1d | 2020-06-08 A | 2020-06-08 A | 47 | 100% |  |  | Tấn Trường | 8h | 8h | 500,000 | 500,000 |
| 49 | 1.6.2.4 | **Test case module quản lý học phí** |  | 2d | 2020-06-09 A | 2020-06-10 A | 42 | 100% |  |  |  | 16h | 16h | 1,000,000 | 1,000,000 |
| 50 | 1.6.2.4.1 | Viết test case thu chi học phí |  | 1d | 2020-06-09 A | 2020-06-09 A |  | 100% |  |  | Tấn Trường | 8h | 8h | 500,000 | 500,000 |
| 51 | 1.6.2.4.2 | Viết test case in ấn báo cáo học phí |  | 1d | 2020-06-10 A | 2020-06-10 A | 50 | 100% |  |  | Tấn Trường | 8h | 8h | 500,000 | 500,000 |
| 52 | 1.7 | Hoàn tất develop và demo | milestone | 0d | 2020-09-29 | 2020-09-29 | 30 |  |  | 0d |  |  |  |  |  |
| 53 | 1.8 | **Setup môi trường test và môi trường thật** |  | 3d | 2020-06-30 | 2020-07-02 | 24 |  |  | 97d |  | 48h |  | 4,500,000 |  |
| 54 | 1.8.1 | **N. Cài đặt servers** |  | 3d | 2020-06-30 | 2020-07-02 |  |  |  | 97d |  | 48h |  | 4,500,000 |  |
| 55 | 1.8.1.1 | **Cài đặt windows server** |  | 3d | 2020-06-30 | 2020-07-02 |  |  |  | 97d |  | 24h |  | 1,500,000 |  |
| 56 | 1.8.1.1.1 | Cài đặt Windows Server 2019 |  | 3d | 2020-06-30 | 2020-07-02 |  |  |  | 97d | Cao Thắng | 24h |  | 1,500,000 |  |

| ID | WBS | Task | Duration | Start | Finish | Predecessors | Total slack | Resources | Work | Cost |
| --- | --- | --- | --- | --- | --- | --- | --- | --- | --- | --- |
| 57 | 1.8.1.2 | **Cài đặt SQL Server** | 3d | 2020-06-30 | 2020-07-02 |  | 97d |  | 24h | 1,500,000 |
| 58 | 1.8.1.2.1 | Cài đặt SQL Server 2019 | 3d | 2020-06-30 | 2020-07-02 |  | 97d | Cao Thắng | 24h | 1,500,000 |
| 59 | 1.9 | **Kiểm thử (testing)** | 21d | 2020-09-30 | 2020-10-28 | 52 | 0d |  | 296h | 25,500,000 |
| 60 | 1.9.1 | **F. Nhập dữ liệu và cấu hình trên môi trường test** | 7d | 2020-09-30 | 2020-10-08 |  | 0d |  | 56h | 4,900,000 |
| 61 | 1.9.1.1 | **Nhập thông tin phòng ban** | 0.75d | 2020-09-30 | 2020-09-30 |  | 0d |  | 6h | 375,000 |
| 62 | 1.9.1.1.1 | Nhập thông tin phòng Kế toán tài chính | 0.25d | 2020-09-30 | 2020-09-30 |  | 0d | Tấn Trường | 2h | 125,000 |
| 63 | 1.9.1.1.2 | Nhập thông tin phòng Công tác quản lý học sinh | 0.25d | 2020-09-30 | 2020-09-30 | 62 | 0d | Tấn Trường | 2h | 125,000 |
| 64 | 1.9.1.1.3 | Nhập thông tin phòng Đào tạo khảo khí | 0.25d | 2020-09-30 | 2020-09-30 | 63 | 0d | Tấn Trường | 2h | 125,000 |
| 65 | 1.9.1.2 | **Nhập thông tin giáo viên** | 3d | 2020-09-30 | 2020-10-05 | 61 | 0d |  | 24h | 1,500,000 |
| 66 | 1.9.1.2.1 | Nhập thông tin giáo viên lớp 10 | 1d | 2020-09-30 | 2020-10-01 |  | 0d | Tấn Trường | 8h | 500,000 |
| 67 | 1.9.1.2.2 | Nhập thông tin giáo viên lớp 11 | 1d | 2020-10-01 | 2020-10-02 | 66 | 0d | Tấn Trường | 8h | 500,000 |
| 68 | 1.9.1.2.3 | Nhập thông tin giáo viên lớp 12 | 1d | 2020-10-02 | 2020-10-05 | 67 | 0d | Tấn Trường | 8h | 500,000 |
| 69 | 1.9.1.3 | **Nhập thông tin lớp** | 1.5d | 2020-10-05 | 2020-10-07 | 65 | 0d |  | 12h | 750,000 |
| 70 | 1.9.1.3.1 | Nhập thông tin lớp 10 | 0.5d | 2020-10-05 | 2020-10-06 |  | 0d | Tấn Trường | 4h | 250,000 |
| 71 | 1.9.1.3.2 | Nhập thông tin lớp 11 | 0.5d | 2020-10-06 | 2020-10-06 | 70 | 0d | Tấn Trường | 4h | 250,000 |
| 72 | 1.9.1.3.3 | Nhập thông tin lớp 12 | 0.5d | 2020-10-06 | 2020-10-07 | 71 | 0d | Tấn Trường | 4h | 250,000 |
| 73 | 1.9.1.4 | **Nhập thông tin học sinh** | 1.75d | 2020-10-07 | 2020-10-08 | 69 | 0d |  | 14h | 875,000 |
| 74 | 1.9.1.4.1 | Nhập thông tin học sinh lớp 10 | 0.75d | 2020-10-07 | 2020-10-07 |  | 0d | Tấn Trường | 6h | 375,000 |
| 75 | 1.9.1.4.2 | Nhập thông tin học sinh lớp 11 | 0.5d | 2020-10-08 | 2020-10-08 | 74 | 0d | Tấn Trường | 4h | 250,000 |
| 76 | 1.9.1.4.3 | Nhập thông tin học sinh lớp 12 | 0.5d | 2020-10-08 | 2020-10-08 | 75 | 0d | Tấn Trường | 4h | 250,000 |
| 77 | 1.9.2 | **G. Thực hiện test** | 14d | 2020-10-09 | 2020-10-28 | 60 | 0d | Tấn Trường | 240h | 20,600,000 |
| 78 | 1.9.2.1 | **Test chức năng quản lý user** | 1d | 2020-10-09 | 2020-10-09 |  | 0d |  | 24h | 1,500,000 |
| 79 | 1.9.2.1.1 | Test chức năng tạo user | 1d | 2020-10-09 | 2020-10-09 |  | 0d | Tuấn Anh | 8h | 500,000 |
| 80 | 1.9.2.1.2 | Test chức năng edit user | 1d | 2020-10-09 | 2020-10-09 |  | 0d | Tuấn Anh | 8h | 500,000 |
| 81 | 1.9.2.1.3 | Test chức năng inactive/activate user | 1d | 2020-10-09 | 2020-10-09 |  | 0d | Tuấn Anh | 8h | 500,000 |

| ID | WBS | Task | Type | Duration | Start | Finish | Predecessors | Total slack | Free slack | Resources | Work | Cost |
| --- | --- | --- | --- | --- | --- | --- | --- | --- | --- | --- | --- | --- |
| 82 | 1.9.2.2 | **Test module quản lý thông tin học sinh** |  | 3d | 2020-10-12 | 2020-10-14 | 78 | 0d |  |  | 24h | 1,500,000 |
| 83 | 1.9.2.2.1 | Test form nhập thông tin học sinh |  | 1d | 2020-10-12 | 2020-10-12 |  | 0d |  | Tấn Trường | 8h | 500,000 |
| 84 | 1.9.2.2.2 | Test form xóa thông tin học sinh |  | 1d | 2020-10-13 | 2020-10-13 | 83 | 0d |  | Tấn Trường | 8h | 500,000 |
| 85 | 1.9.2.2.3 | Test form sửa thông tin học sinh |  | 1d | 2020-10-14 | 2020-10-14 | 84 | 0d |  | Tấn Trường | 8h | 500,000 |
| 86 | 1.9.2.3 | **Test module quản lý điểm học sinh** |  | 6d | 2020-10-15 | 2020-10-22 | 82 | 0d |  |  | 48h | 3,000,000 |
| 87 | 1.9.2.3.1 | Test form nhập điểm |  | 1d | 2020-10-15 | 2020-10-15 |  | 0d |  | Tấn Trường | 8h | 500,000 |
| 88 | 1.9.2.3.2 | Test form xóa điểm |  | 1d | 2020-10-16 | 2020-10-16 | 87 | 0d |  | Tấn Trường | 8h | 500,000 |
| 89 | 1.9.2.3.3 | Test form sửa điểm |  | 1d | 2020-10-19 | 2020-10-19 | 88 | 0d |  | Tấn Trường | 8h | 500,000 |
| 90 | 1.9.2.3.4 | Test form tính điểm trung bình |  | 1d | 2020-10-20 | 2020-10-20 | 89 | 0d |  | Tấn Trường | 8h | 500,000 |
| 91 | 1.9.2.3.5 | Test form thống kê xếp loại học sinh |  | 1d | 2020-10-21 | 2020-10-21 | 90 | 0d |  | Tấn Trường | 8h | 500,000 |
| 92 | 1.9.2.3.6 | Test form phiếu điểm bảng điểm các môn |  | 1d | 2020-10-22 | 2020-10-22 | 91 | 0d |  | Tấn Trường | 8h | 500,000 |
| 93 | 1.9.2.4 | **Test module quản lý học phí** |  | 4d | 2020-10-23 | 2020-10-28 | 86 | 0d |  |  | 32h | 2,000,000 |
| 94 | 1.9.2.4.1 | Test form thu chi học phí |  | 2d | 2020-10-23 | 2020-10-26 |  | 0d |  | Tấn Trường | 16h | 1,000,000 |
| 95 | 1.9.2.4.2 | Test form in ấn báo cáo học phí |  | 2d | 2020-10-27 | 2020-10-28 | 94 | 0d |  | Tấn Trường | 16h | 1,000,000 |
| 96 | 1.10 | Hoàn thành kiểm thử | milestone | 0d | 2020-10-28 | 2020-10-28 | 59 | 0d |  |  |  |  |
| 97 | 1.11 | **Training người dùng** |  | 6d | 2020-09-30 | 2020-10-07 | 52 | 18d | 0d |  | 48h | 4,800,000 |
| 98 | 1.11.1 | **J. Training chức năng quản lý học sinh** |  | 2d | 2020-09-30 | 2020-10-01 |  | 18d | 0d |  | 16h | 1,600,000 |
| 99 | 1.11.1.1 | Các chức năng nhập, sửa, xóa thông tin |  | 2d | 2020-09-30 | 2020-10-01 |  | 18d |  | Tuấn Anh | 16h | 1,000,000 |
| 100 | 1.11.2 | **K. Training chức năng quản lý học phí** |  | 2d | 2020-10-02 | 2020-10-05 | 98 | 18d | 0d |  | 16h | 1,600,000 |
| 101 | 1.11.2.1 | Training các chức năng nhập, xóa sửa thông tin học phí |  | 2d | 2020-10-02 | 2020-10-05 |  | 18d |  | Tuấn Anh | 16h | 1,000,000 |
| 102 | 1.11.3 | **L. Training chức năng quản lý điểm** |  | 2d | 2020-10-06 | 2020-10-07 | 100 | 18d |  |  | 16h | 1,600,000 |
| 103 | 1.11.3.1 | Training các chức năng nhập, xóa sửa điểm |  | 2d | 2020-10-06 | 2020-10-07 |  | 18d |  | Tuấn Anh | 16h | 1,000,000 |
| 104 | 1.12 | Hoàn thành training người dùng | milestone | 0d | 2020-10-07 | 2020-10-07 | 97 | 18d |  |  |  |  |
| 105 | 1.13 | **Triển khai trên môi trường thật** |  | 3d | 2020-10-29 | 2020-11-02 | 96 | 0d |  |  | 60h | 4,350,000 |
| 106 | 1.13.1 | **H. Nhập dữ liệu và cấu hình trên môi trường thật** |  | 3d | 2020-10-29 | 2020-11-02 |  | 0d |  |  | 60h | 4,350,000 |
| 107 | 1.13.1.1 | **Nhập thông tin phòng ban** |  | 0.25d | 2020-10-29 | 2020-10-29 |  | 0d |  |  | 6h | 375,000 |
| 108 | 1.13.1.1.1 | Nhập thông tin phòng Kế toán tài chính |  | 0.25d | 2020-10-29 | 2020-10-29 |  | 0d |  | Tuấn Anh | 2h | 125,000 |
| 109 | 1.13.1.1.2 | Nhập thông tin phòng Công tác quản lý học sinh |  | 0.25d | 2020-10-29 | 2020-10-29 |  | 0d |  | Tuấn Anh | 2h | 125,000 |
| 110 | 1.13.1.1.3 | Nhập thông tin phòng Đào tạo khảo khí |  | 0.25d | 2020-10-29 | 2020-10-29 |  | 0d |  | Tuấn Anh | 2h | 125,000 |

| ID | WBS | Task | Type | Duration | Start | Finish | Predecessors | Total slack | Resources | Work | Cost |
| --- | --- | --- | --- | --- | --- | --- | --- | --- | --- | --- | --- |
| 111 | 1.13.1.2 | **Nhập thông tin giáo viên** |  | 1d | 2020-10-29 | 2020-10-30 | 107 | 0d |  | 16h | 1,000,000 |
| 112 | 1.13.1.2.1 | Nhập thông tin giáo viên lớp 10 |  | 1d | 2020-10-29 | 2020-10-30 |  | 0d | Tuấn Anh | 8h | 500,000 |
| 113 | 1.13.1.2.2 | Nhập thông tin giáo viên lớp 11 |  | 0.5d | 2020-10-29 | 2020-10-29 |  | 0.5d | Tuấn Anh | 4h | 250,000 |
| 114 | 1.13.1.2.3 | Nhập thông tin giáo viên lớp 12 |  | 0.5d | 2020-10-29 | 2020-10-29 |  | 0.5d | Tuấn Anh | 4h | 250,000 |
| 115 | 1.13.1.3 | **Nhập thông tin lớp** |  | 0.5d | 2020-10-30 | 2020-10-30 | 111 | 0d |  | 12h | 750,000 |
| 116 | 1.13.1.3.1 | Nhập thông tin lớp 10 |  | 0.5d | 2020-10-30 | 2020-10-30 |  | 0d | Tuấn Anh | 4h | 250,000 |
| 117 | 1.13.1.3.2 | Nhập thông tin lớp 11 |  | 0.5d | 2020-10-30 | 2020-10-30 |  | 0d | Tuấn Anh | 4h | 250,000 |
| 118 | 1.13.1.3.3 | Nhập thông tin lớp 12 |  | 0.5d | 2020-10-30 | 2020-10-30 |  | 0d | Tuấn Anh | 4h | 250,000 |
| 119 | 1.13.1.4 | **Nhập thông tin học sinh** |  | 1.25d | 2020-10-30 | 2020-11-02 | 115 | 0d |  | 26h | 1,625,000 |
| 120 | 1.13.1.4.1 | Nhập thông tin học sinh lớp 10 |  | 1.25d | 2020-10-30 | 2020-11-02 |  | 0d | Tuấn Anh | 10h | 625,000 |
| 121 | 1.13.1.4.2 | Nhập thông tin học sinh lớp 11 |  | 1d | 2020-10-30 | 2020-11-02 |  | 0.25d | Tuấn Anh | 8h | 500,000 |
| 122 | 1.13.1.4.3 | Nhập thông tin học sinh lớp 12 |  | 1d | 2020-10-30 | 2020-11-02 |  | 0.25d | Tuấn Anh | 8h | 500,000 |
| 123 | 1.14 | Hoàn tất triển khai môi trường thật | milestone | 0d | 2020-11-02 | 2020-11-02 | 105 | 0d |  |  |  |
| 124 | 1.15 | I. Các công việc khác (buffer) |  | 10d | 2020-11-03 | 2020-11-16 | 123, 104 | 0d | PM | 80h | 9,000,000 |
| 125 | 1.16 | Go live (Hoàn thành dự án) | milestone | 0d | 2020-11-16 | 2020-11-16 | 124 | 0d |  |  |  |
